# camod Release 2.5.1

Schedule from MS Project, 2009-01-05 to 2009-07-10.
NCI

## Calendars

- Standard: Mon-Fri 08:00-12:00, 13:00-17:00; Sat-Sun off.

## Resources

| Resource |
| --- |
| Sima |
| Ulli |
| Juli |
| Maki |
| Kavitha |
| QA |
| Jill |
| Security Team |
| Systems |

## Schedule

| ID | WBS | Task | Type | Duration | Start | Finish | Predecessors | Total slack | Constraint | Resources | Work |
| --- | --- | --- | --- | --- | --- | --- | --- | --- | --- | --- | --- |
| 1 | 1 | **caMOD 2.5.1 Release** |  | 135d | 2009-01-05 | 2009-07-10 |  | 0d |  |  | 1408h |
| 2 | 1.1 | **Inception Phase** |  | 10d | 2009-01-05 | 2009-01-16 |  | 0d |  |  | 192h |
| 3 | 1.1.1 | Scope 2.5.1 Release |  | 6d | 2009-01-05 | 2009-01-12 |  | 0d | start no earlier than 2009-01-05 | Sima; Ulli | 96h |
| 4 | 1.1.2 | Schedule 2.5.1 Release |  | 4d | 2009-01-13 | 2009-01-16 | 3 | 0d | start no earlier than 2009-01-13 | Sima; Maki; Ulli | 96h |
| 5 | 1.1.3 | Milestone: Inception Completed | milestone | 0d | 2009-01-16 | 2009-01-16 | 4 | 1d |  |  |  |
| 6 | 1.2 | **Elaboration Phase** |  | 10d | 2009-01-20 | 2009-02-02 | 5 | 0d |  |  | 128h |
| 7 | 1.2.1 | Use Case and Design Doc (caBIG template) |  | 7d | 2009-01-20 | 2009-01-28 |  | 0d | finish no earlier than 2009-01-22 | Sima | 56h |
| 8 | 1.2.2 | Review use cases / design with the "Review Board" |  | 3d | 2009-01-29 | 2009-02-02 | 7 | 0d | finish no earlier than 2009-01-27 | Juli; Maki; Ulli | 72h |
| 9 | 1.2.3 | Milestone: Elaboration Completed | milestone | 0d | 2009-02-02 | 2009-02-02 | 7, 8 | 0d |  |  |  |
| 10 | 1.3 | **Construction Phase** |  | 86d | 2009-02-03 | 2009-06-02 | 6 | 0d |  |  | 736h |
| 11 | 1.3.1 | **Iteration 1** |  | 27d | 2009-02-03 | 2009-03-11 |  | 0d |  |  | 200h |
| 12 | 1.3.1.1 | **caMOD - Cancer Models Database - Feature Requests** |  | 22d | 2009-02-03 | 2009-03-04 |  | 0d |  |  | 160h |
| 13 | 1.3.1.1.1 | 4772-Make caMod available in the grid using newest technology |  | 10d | 2009-02-03 | 2009-02-18 |  | 0d |  | Sima | 80h |
| 14 | 1.3.1.1.2 | 17325-Upgrade caMOD to use caBIO 4.1 to get data |  | 10d | 2009-02-19 | 2009-03-04 | 13 | 0d |  | Sima | 80h |
| 15 | 1.3.1.2 | **EVS Tree** |  | 5d | 2009-03-05 | 2009-03-11 |  | 0d |  |  | 40h |
| 16 | 1.3.1.2.1 | 10957-Implement connection to EVS 4.x (Lexbig Vocabuarly System / Architecture) |  | 5d | 2009-03-05 | 2009-03-11 | 14 | 0d |  | Sima | 40h |
| 17 | 1.3.1.3 | Milestone: Iteration 1 Completed | milestone | 0d | 2009-03-11 | 2009-03-11 | 12, 15 | 0d |  |  |  |
| 18 | 1.3.2 | **Iteration 2** |  | 34d | 2009-03-12 | 2009-04-28 | 11 | 0d |  |  | 280h |
| 19 | 1.3.2.1 | **caMOD - Cancer Models Database - Feature Requests** |  | 1d | 2009-03-12 | 2009-03-12 |  | 33d |  |  | 8h |
| 20 | 1.3.2.1.1 | 17040-Make PMID field on advanced search page userfriendlier by adding a link to PubMed and trim functions |  | 1d | 2009-03-12 | 2009-03-12 |  | 45d |  | Sima | 8h |
| 21 | 1.3.2.2 | **caMOD - Cancer Models Database - Bugs** |  | 34d | 2009-03-12 | 2009-04-28 |  | 0d |  |  | 272h |
| 22 | 1.3.2.2.1 | 18754-MTB data not displayed - causing crash |  | 5d | 2009-03-12 | 2009-03-18 |  | 0d |  | Sima | 40h |
| 23 | 1.3.2.2.2 | 18717-Sort therapies in the order they are entered |  | 3d | 2009-03-19 | 2009-03-23 | 22 | 0d |  | Sima | 24h |
| 24 | 1.3.2.2.3 | 18694-Correct the spelling of Motility on Therapy/Biological Process page |  | 1d | 2009-03-24 | 2009-03-24 | 23 | 0d |  | Sima | 8h |
| 25 | 1.3.2.2.4 | 18267-No other zebrafish diagnosis shown on search page |  | 1d | 2009-03-25 | 2009-03-25 | 24 | 0d |  | Sima | 8h |
| 26 | 1.3.2.2.5 | 17993-autocomplete Servlet.service() throws java.lang.OutOfMemoryError: Java heap space |  | 5d | 2009-03-26 | 2009-04-01 | 25 | 0d |  | Sima | 40h |
| 27 | 1.3.2.2.6 | 17320-Make sure all filed sizes in database are validated correctly in validation.xml |  | 5d | 2009-04-02 | 2009-04-08 | 26 | 0d |  | Sima | 40h |
| 28 | 1.3.2.2.7 | 12483-why does &amp;amp;amp;amp;quot;unpublished&amp;amp;amp;amp;quot; entry not show up on publication search page |  | 1d | 2009-04-09 | 2009-04-09 | 27 | 0d |  | Sima | 8h |
| 29 | 1.3.2.2.8 | 11623-Construct sequence field on genetic description pages is independent of image submission |  | 2d | 2009-04-10 | 2009-04-13 | 28 | 0d |  | Sima | 16h |
| 30 | 1.3.2.2.9 | 8400-Duplication does not work for some fields |  | 10d | 2009-04-14 | 2009-04-27 | 29 | 0d |  | Sima | 80h |
| 31 | 1.3.2.2.10 | 5235-amount of cells on Transplantation needs to accept 10^6 instead of a number (validation) |  | 1d | 2009-04-28 | 2009-04-28 | 30 | 0d |  | Sima | 8h |
| 32 | 1.3.2.3 | Milestone: Iteration 2 Completed | milestone | 0d | 2009-04-28 | 2009-04-28 | 19, 21 | 0d |  |  |  |

| ID | WBS | Task | Type | Duration | Start | Finish | Predecessors | Total slack | Resources | Work |
| --- | --- | --- | --- | --- | --- | --- | --- | --- | --- | --- |
| 33 | 1.3.3 | **Testing** |  | 25d | 2009-04-29 | 2009-06-02 | 11, 18 | 0d |  | 256h |
| 34 | 1.3.3.1 | Update test cases |  | 9d | 2009-04-29 | 2009-05-14 | 21 | 0d | Sima; Ulli | 80h |
| 35 | 1.3.3.2 | Deploy iteration on DEV Server |  | 2d | 2009-05-15 | 2009-05-18 | 34 | 0d | Sima | 16h |
| 36 | 1.3.3.3 | Test on DEV tier |  | 10d | 2009-05-19 | 2009-06-02 | 35 | 0d | Sima; Ulli | 160h |
| 37 | 1.3.4 | Milestone: Construction Completed | milestone | 0d | 2009-06-02 | 2009-06-02 | 33 | 0d |  |  |
| 38 | 1.4 | **Transition Phase** |  | 28d | 2009-06-03 | 2009-07-10 | 37 | 0d |  | 352h |
| 39 | 1.4.1 | **QA** |  | 10d | 2009-06-03 | 2009-06-16 |  | 0d |  | 80h |
| 40 | 1.4.1.1 | Finalize Testplan |  | 5d | 2009-06-03 | 2009-06-09 |  | 0d | QA | 40h |
| 41 | 1.4.1.2 | Finalize Test Cases |  | 5d | 2009-06-10 | 2009-06-16 | 40 | 0d | QA | 40h |
| 42 | 1.4.2 | **Deploy** |  | 18d | 2009-06-17 | 2009-07-10 |  | 0d |  | 160h |
| 43 | 1.4.2.1 | **QA Server Deployment** |  | 5d | 2009-06-17 | 2009-06-23 |  | 0d |  | 40h |
| 44 | 1.4.2.1.1 | QA Testing |  | 5d | 2009-06-17 | 2009-06-23 | 39 | 0d | QA | 40h |
| 45 | 1.4.2.1.2 | Milestone: QA Testing Completed | milestone | 0d | 2009-06-23 | 2009-06-23 | 44 | 0d |  |  |
| 46 | 1.4.2.2 | **Staging Server Deployment** |  | 9d | 2009-06-24 | 2009-07-06 |  | 0d |  | 72h |
| 47 | 1.4.2.2.1 | Stage Testing |  | 5d | 2009-06-24 | 2009-06-30 | 45 | 0d | QA | 40h |
| 48 | 1.4.2.2.2 | App scan on QA |  | 4d | 2009-07-01 | 2009-07-06 | 47 | 0d | Security Team | 32h |
| 49 | 1.4.2.3 | **Production Server Deployment** |  | 4d | 2009-07-07 | 2009-07-10 |  | 0d |  | 48h |
| 50 | 1.4.2.3.1 | Production server deployment |  | 2d | 2009-07-07 | 2009-07-08 | 48 | 0d | Systems | 16h |
| 51 | 1.4.2.3.2 | Production Verification |  | 2d | 2009-07-09 | 2009-07-10 | 50 | 0d | Sima; Ulli | 32h |
| 52 | 1.4.3 | **Documentation** |  | 5d | 2009-06-17 | 2009-06-23 |  | 13d |  | 40h |
| 53 | 1.4.3.1 | Documentation Edit by Documentation Team |  | 5d | 2009-06-17 | 2009-06-23 | 39 | 13d | Jill | 40h |
| 54 | 1.4.4 | **Content Page Update** |  | 3d | 2009-07-07 | 2009-07-09 |  | 1d |  | 72h |
| 55 | 1.4.4.1 | zope site update |  | 3d | 2009-07-07 | 2009-07-09 | 46 | 1d | Maki; Ulli | 48h |
| 56 | 1.4.4.2 | gForge download site update |  | 3d | 2009-07-07 | 2009-07-09 | 46 | 1d | Sima | 24h |
| 57 | 2 | caMOD 2.5.1 - Closeout | milestone | 0d | 2009-07-10 | 2009-07-10 | 38 | 0d |  |  |
